Schedule from OmniPlan, 2013-01-07 to 2014-11-03.
Project start 2012-12-09

## Resources

| Resource | Group |
| --- | --- |
| Resource 1 | staff |
| Equipment 1 | equipment |
| Material 1 | material |
| Group 1 | group |
| Resource 1 | staff |

## Schedule

| ID | WBS | Task | Type | Start | Predecessors | Constraint | Work |
| --- | --- | --- | --- | --- | --- | --- | --- |
| 1 | 1 | **SVT** |  | 2013-01-07 |  | start no earlier than 2013-01-07 |  |
| 2 | 1.1 | **Milestones** |  | 2013-02-01 |  |  |  |
| 3 | 1.1.1 | SVT returns from JLab | milestone | 2013-02-01 |  | start no earlier than 2013-02-01 |  |
| 4 | 1.1.2 | Project funded | milestone | 2013-10-01 |  | start no earlier than 2013-10-01 |  |
| 5 | 1.2 | **Layers 1-3** |  | 2013-01-07 |  |  |  |
| 6 | 1.2.1 | **Modules** |  | 2013-01-07 |  |  |  |
| 7 | 1.2.1.1 | **Half modules** |  | 2014-05-05 |  |  |  |
| 8 | 1.2.1.1.1 | Disassembly |  | 2014-05-05 | 3 | start no earlier than 2014-05-05 | 40.71h |
| 9 | 1.2.1.1.2 | Testing |  | 2014-05-12 | 8 |  | 80h |
| 10 | 1.2.1.1.3 | QA and selection |  | 2014-05-26 | 9 | start no earlier than 2014-04-15 | 40h |
| 11 | 1.2.1.1.4 | Layers 1-3 Half Modules Complete | milestone | 2014-06-02 | 10 |  |  |
| 12 | 1.2.1.2 | **Module supports** |  | 2013-01-07 |  |  |  |
| 13 | 1.2.1.2.1 | Prototyping |  | 2013-01-07 |  |  | 480h |
| 14 | 1.2.1.2.2 | Design |  | 2014-04-14 | 13 | start no earlier than 2014-04-14 | 40h |
| 15 | 1.2.1.2.3 | Procurement |  | 2014-04-21 | 4, 14 | start no earlier than 2014-04-21 | 40h |
| 16 | 1.2.1.2.4 | Fabrication |  | 2014-04-28 | 15 |  | 80h |
| 17 | 1.2.1.2.5 | Assembly |  | 2014-05-12 | 16 |  | 40h |
| 18 | 1.2.1.3 | **Integration** |  | 2014-03-24 |  |  |  |
| 19 | 1.2.1.3.1 | **Design** |  | 2014-03-24 |  |  |  |
| 20 | 1.2.1.3.1.1 | Module |  | 2014-03-24 | 14FF |  | 160h |
| 21 | 1.2.1.3.1.2 | Assembly fixture |  | 2014-04-21 | 14 |  | 80h |
| 22 | 1.2.1.3.2 | **Procurement** |  | 2014-05-05 | 4 |  |  |
| 23 | 1.2.1.3.2.1 | Module assembly fixture |  | 2014-05-05 | 21 |  | 40h |
| 24 | 1.2.1.3.3 | **Fabrication** |  | 2014-05-12 |  |  |  |
| 25 | 1.2.1.3.3.1 | Module assembly fixture |  | 2014-05-12 | 23 |  | 80h |

| ID | WBS | Task | Type | Start | Predecessors | Work |
| --- | --- | --- | --- | --- | --- | --- |
| 26 | 1.2.1.3.4 | **Assembly** |  | 2014-06-02 | 12, 11 |  |
| 27 | 1.2.1.3.4.1 | Half module preparation |  | 2014-06-02 |  | 40h |
| 28 | 1.2.1.3.4.2 | Module assembly |  | 2014-06-09 | 27 | 80h |
| 29 | 1.2.1.3.5 | **Testing** |  | 2014-06-23 |  |  |
| 30 | 1.2.1.3.5.1 | DAQ testing |  | 2014-06-23 | 28 | 80h |
| 31 | 1.2.1.3.5.2 | Survey |  | 2014-06-23 | 30FF | 80h |
| 32 | 1.2.1.4 | Layers 1-3 modules complete | milestone | 2014-07-07 | 29 |  |
| 33 | 1.2.2 | **Support channels** |  | 2014-04-21 |  |  |
| 34 | 1.2.2.1 | **Design** |  | 2014-04-21 |  |  |
| 35 | 1.2.2.1.1 | Support channel |  | 2014-04-21 | 20 | 80h |
| 36 | 1.2.2.2 | **Procurement** |  | 2014-05-05 | 34, 4 |  |
| 37 | 1.2.2.2.1 | Support channel |  | 2014-05-05 |  | 160h |
| 38 | 1.2.2.3 | **Fabrication** |  | 2014-06-02 | 36 |  |
| 39 | 1.2.2.3.1 | Small parts |  | 2014-06-02 |  | 80h |
| 40 | 1.2.2.4 | **Assembly** |  | 2014-07-07 | 32, 38 |  |
| 41 | 1.2.2.4.1 | Module mounting |  | 2014-07-07 |  | 80h |
| 42 | 1.2.2.5 | **Testing** |  | 2014-07-07 | 40SS |  |
| 43 | 1.2.2.5.1 | DAQ testing |  | 2014-07-07 |  | 160h |
| 44 | 1.2.2.5.2 | Survey |  | 2014-07-07 |  | 80h |
| 45 | 1.2.2.6 | Layers 1-3 complete | milestone | 2014-08-04 | 42 |  |
| 46 | 1.3 | **Layers 4-6** |  | 2013-01-07 |  |  |
| 47 | 1.3.1 | **Modules** |  | 2013-01-07 |  |  |
| 48 | 1.3.1.1 | **Half Modules** |  | 2013-01-07 |  |  |
| 49 | 1.3.1.1.1 | **Supports** |  | 2013-01-07 |  |  |
| 50 | 1.3.1.1.1.1 | **Design** |  | 2013-01-07 |  |  |
| 51 | 1.3.1.1.1.1.1 | Carbon Fiber |  | 2013-01-07 |  | 160h |
| 52 | 1.3.1.1.1.1.2 | Kapton |  | 2013-01-07 | 51FF | 160h |

| ID | WBS | Task | Start | Predecessors | Work |
| --- | --- | --- | --- | --- | --- |
| 53 | 1.3.1.1.1.2 | **Procurement** | 2013-10-01 | 4, 50 |  |
| 54 | 1.3.1.1.1.2.1 | Carbon fiber | 2013-10-01 |  | 160h |
| 55 | 1.3.1.1.1.2.2 | Kapton | 2013-10-01 | 54FF | 160h |
| 56 | 1.3.1.1.1.3 | Fabrication | 2013-10-29 | 53 | 80h |
| 57 | 1.3.1.1.1.4 | Assembly | 2013-11-12 | 56 | 160h |
| 58 | 1.3.1.1.1.5 | Testing | 2013-12-10 | 57 | 40h |
| 59 | 1.3.1.1.2 | **Sensors** | 2013-01-07 |  |  |
| 60 | 1.3.1.1.2.1 | Procurement | 2013-01-07 |  | 160h |
| 61 | 1.3.1.1.2.2 | Testing | 2013-02-04 | 60 | 80h |
| 62 | 1.3.1.1.3 | **Integration** | 2013-01-07 |  |  |
| 63 | 1.3.1.1.3.1 | **Design** | 2013-01-07 |  |  |
| 64 | 1.3.1.1.3.1.1 | Half-module design | 2013-01-07 | 52FF | 320h |
| 65 | 1.3.1.1.3.1.2 | Support assembly fixture | 2013-03-04 | 64 | 80h |
| 66 | 1.3.1.1.3.1.3 | Half-module assembly fixture | 2013-03-04 | 64 | 160h |
| 67 | 1.3.1.1.3.1.4 | Wirebonding fixture | 2013-03-04 | 64 | 160h |
| 68 | 1.3.1.1.3.2 | **Procurement** | 2013-03-18 |  |  |
| 69 | 1.3.1.1.3.2.1 | Support assembly fixture | 2013-03-18 | 65 | 160h |
| 70 | 1.3.1.1.3.2.2 | Half-module assembly fixture | 2013-04-01 | 66 | 160h |
| 71 | 1.3.1.1.3.2.3 | Wirebonding fixture | 2013-04-01 | 67 | 160h |
| 72 | 1.3.1.1.3.3 | **Fabrication** | 2013-04-29 |  |  |
| 73 | 1.3.1.1.3.3.1 | Small parts | 2013-04-29 | 68 | 80h |
| 74 | 1.3.1.1.3.4 | **Assembly** | 2013-10-01 | 4 |  |
| 75 | 1.3.1.1.3.4.1 | half-module assembly | 2013-10-01 | 72 | 160h |
| 76 | 1.3.1.1.3.4.2 | wirebonding | 2013-10-01 | 75SS | 160h |

| ID | WBS | Task | Type | Start | Predecessors | Work |
| --- | --- | --- | --- | --- | --- | --- |
| 77 | 1.3.1.1.3.5 | **Testing** |  | 2013-10-01 |  |  |
| 78 | 1.3.1.1.3.5.1 | DAQ testing |  | 2013-10-01 | 76SS | 160h |
| 79 | 1.3.1.1.3.6 | Layers 4-6 Half Modules Complete | milestone | 2013-10-29 | 77 |  |
| 80 | 1.3.1.2 | **Module supports** |  | 2014-04-21 |  |  |
| 81 | 1.3.1.2.1 | Design |  | 2014-04-21 | 14 | 40h |
| 82 | 1.3.1.2.2 | Procurement |  | 2014-04-28 | 4, 81 | 40h |
| 83 | 1.3.1.2.3 | Fabrication |  | 2014-05-05 | 82 | 80h |
| 84 | 1.3.1.2.4 | Assembly |  | 2014-05-19 | 83 | 40h |
| 85 | 1.3.1.2.5 | Testing |  | 2014-05-26 | 84 | 40h |
| 86 | 1.3.1.3 | **Integration** |  | 2014-03-31 |  |  |
| 87 | 1.3.1.3.1 | **Design** |  | 2014-03-31 |  |  |
| 88 | 1.3.1.3.1.1 | Module |  | 2014-03-31 | 81FF, 64FF | 160h |
| 89 | 1.3.1.3.1.2 | Module assembly fixture |  | 2014-04-28 | 88 | 80h |
| 90 | 1.3.1.3.2 | **Procurement** |  | 2014-05-12 | 4 |  |
| 91 | 1.3.1.3.2.1 | Module assembly fixture |  | 2014-05-12 | 89 | 40h |
| 92 | 1.3.1.3.3 | **Fabrication** |  | 2014-05-19 |  |  |
| 93 | 1.3.1.3.3.1 | Module assembly fixture |  | 2014-05-19 | 91 | 80h |
| 94 | 1.3.1.3.4 | **Assembly** |  | 2014-06-02 |  |  |
| 95 | 1.3.1.3.4.1 | Modules |  | 2014-06-02 | 79, 93 | 40h |
| 96 | 1.3.1.3.5 | **Testing** |  | 2014-06-02 | 94SS |  |
| 97 | 1.3.1.3.5.1 | DAQ testing |  | 2014-06-02 |  | 80h |
| 98 | 1.3.1.3.5.2 | Survey |  | 2014-06-16 | 97 | 80h |
| 99 | 1.3.1.4 | Layers 4-6 Modules Complete | milestone | 2014-06-28 | 98 |  |
| 100 | 1.3.2 | **Support channels** |  | 2014-04-28 | 33SS |  |
| 101 | 1.3.2.1 | **Design** |  | 2014-04-28 |  |  |
| 102 | 1.3.2.1.1 | Support channel |  | 2014-04-28 | 88 | 80h |

| ID | WBS | Task | Type | Start | Predecessors | Work |
| --- | --- | --- | --- | --- | --- | --- |
| 103 | 1.3.2.2 | **Procurement** |  | 2014-05-12 | 101, 4 |  |
| 104 | 1.3.2.2.1 | Support channel |  | 2014-05-12 |  | 160h |
| 105 | 1.3.2.3 | **Fabrication** |  | 2014-06-09 | 103 |  |
| 106 | 1.3.2.3.1 | Small parts |  | 2014-06-09 |  | 80h |
| 107 | 1.3.2.4 | **Assembly** |  | 2014-06-30 | 105 |  |
| 108 | 1.3.2.4.1 | Module mounting |  | 2014-06-30 | 99 | 80h |
| 109 | 1.3.2.5 | **Testing** |  | 2014-07-14 | 107 |  |
| 110 | 1.3.2.5.1 | DAQ testing |  | 2014-07-14 |  | 80h |
| 111 | 1.3.2.5.2 | Survey |  | 2014-07-14 |  | 80h |
| 112 | 1.3.2.6 | Layers 4-6 complete | milestone | 2014-07-26 | 109 |  |
| 113 | 1.4 | **Tracker support structures** |  | 2014-05-12 | 4 |  |
| 114 | 1.4.1 | **Support Box** |  | 2014-05-12 |  |  |
| 115 | 1.4.1.1 | Design |  | 2014-05-12 | 102, 35 | 80h |
| 116 | 1.4.1.2 | Procurement |  | 2014-05-26 | 115 | 40h |
| 117 | 1.4.1.3 | Fabrication |  | 2014-06-02 | 116 | 160h |
| 118 | 1.4.2 | **Support ring** |  | 2014-05-12 |  |  |
| 119 | 1.4.2.1 | Design |  | 2014-05-12 | 102, 35 | 80h |
| 120 | 1.4.2.2 | Procurement |  | 2014-05-26 | 4, 119 | 40h |
| 121 | 1.4.2.3 | Fabrication |  | 2014-06-02 | 120 | 160h |
| 122 | 1.4.3 | **DAQ Support/Cooling** |  | 2014-05-12 |  |  |
| 123 | 1.4.3.1 | Design |  | 2014-05-12 | 102, 35 | 80h |
| 124 | 1.4.3.2 | Procurement |  | 2014-05-26 | 4, 123 | 40h |
| 125 | 1.4.3.3 | Fabrication |  | 2014-06-02 | 124 | 160h |
| 126 | 1.4.4 | Assembly |  | 2014-06-30 | 117, 121, 125 | 80h |
| 127 | 1.4.5 | Testing |  | 2014-07-14 | 126 | 80h |
| 128 | 1.4.6 | Tracker Support Complete | milestone | 2014-07-26 | 127 |  |

| ID | WBS | Task | Type | Start | Predecessors | Constraint | Work |
| --- | --- | --- | --- | --- | --- | --- | --- |
| 129 | 1.5 | **Services** |  | 2013-10-01 | 4 |  |  |
| 130 | 1.5.1 | **Vacuum Flanges/Boards/cables** |  | 2013-10-01 |  |  |  |
| 131 | 1.5.1.1 | Design |  | 2013-10-01 |  |  | 480h |
| 132 | 1.5.1.2 | Procurement |  | 2013-12-24 | 4, 131 |  | 480h |
| 133 | 1.5.1.3 | Fabrication |  | 2014-03-18 | 132 |  | 80h |
| 134 | 1.5.1.4 | Assembly |  | 2014-05-20 | 180, 188, 133 | start no earlier than 2014-04-16 | 80h |
| 135 | 1.5.1.5 | Testing |  | 2014-06-03 | 134 |  | 80h |
| 136 | 1.5.2 | **Shipping** |  | 2014-05-12 |  |  |  |
| 137 | 1.5.2.1 | Design |  | 2014-05-12 | 102, 35 | start no earlier than 2014-04-28 | 120h |
| 138 | 1.5.2.2 | Procurement |  | 2014-06-02 | 137 |  | 160h |
| 139 | 1.5.2.3 | Fabrication |  | 2014-06-30 | 138 |  | 80h |
| 140 | 1.5.2.4 | Assembly |  | 2014-07-14 | 139 |  | 40h |
| 141 | 1.5.2.5 | Testing |  | 2014-07-21 | 140 |  | 40h |
| 142 | 1.5.3 | Services complete | milestone | 2014-07-26 | 135, 141 |  |  |
| 143 | 1.6 | **Integration at SLAC** |  | 2014-08-04 |  |  |  |
| 144 | 1.6.1 | Assembly |  | 2014-08-04 | 171, 112, 45, 135, 128 |  | 80h |
| 145 | 1.6.2 | Testing |  | 2014-08-18 | 144 |  | 160h |
| 146 | 1.6.3 | SVT ready to ship | milestone | 2014-09-15 | 267, 142, 145 |  |  |
| 147 | 1.7 | **Integration at JLab** |  | 2014-09-15 | 146 |  |  |
| 148 | 1.7.1 | Assembly |  | 2014-09-15 |  |  | 80h |
| 149 | 1.7.2 | Testing |  | 2014-09-29 | 148 |  | 160h |
| 150 | 1.7.3 | Installation |  | 2014-10-27 | 149 |  | 40h |
| 151 | 1.7.4 | SVT project complete | milestone | 2014-11-03 | 150 |  |  |
| 152 | 2 | **SVT DAQ** |  | 2013-08-05 |  |  |  |
| 153 | 2.1 | **Hybrids** |  | 2013-08-05 |  |  |  |
| 154 | 2.1.1 | Design |  | 2013-08-05 |  | start no earlier than 2013-08-05 | 320h |
| 155 | 2.1.2 | Procurement |  | 2013-09-30 | 154 |  | 80h |
| 156 | 2.1.3 | Fabrication |  | 2013-10-14 | 155 |  | 80h |
| 157 | 2.1.4 | Assembly |  | 2013-10-28 | 156 |  | 160h |
| 158 | 2.1.5 | Testing |  | 2013-11-25 | 157 |  | 160h |
| 159 | 2.1.6 | Hybrids Complete | milestone | 2013-12-21 | 158 |  |  |

| ID | WBS | Task | Type | Start | Predecessors | Constraint | Work |
| --- | --- | --- | --- | --- | --- | --- | --- |
| 160 | 2.2 | **FE Boards** |  | 2013-12-02 |  | start no earlier than 2013-12-02 |  |
| 161 | 2.2.1 | Design |  | 2013-12-02 |  |  | 240h |
| 162 | 2.2.2 | Procurement |  | 2014-01-24 | 161 | start no earlier than 2014-01-24 | 40h |
| 163 | 2.2.3 | Assembly |  | 2014-01-31 | 162 |  | 40h |
| 164 | 2.2.4 | Firmware |  | 2013-12-27 |  | start no earlier than 2013-12-27 | 160h |
| 165 | 2.2.5 | Testing |  | 2014-02-07 | 163, 176SS, 164 |  | 648h |
| 166 | 2.2.6 | FE Board Functionality Complete | milestone | 2014-05-31 | 165 |  |  |
| 167 | 2.2.7 | Layout 2nd spin |  | 2014-06-02 | 166 |  | 80h |
| 168 | 2.2.8 | Procurement 2nd spin |  | 2014-06-16 | 167 |  | 60h |
| 169 | 2.2.9 | Assembly |  | 2014-06-25 | 168 |  | 60h |
| 170 | 2.2.10 | Production Testing |  | 2014-07-07 | 169 |  | 80h |
| 171 | 2.2.11 | FE Boards Complete | milestone | 2014-07-19 | 170 |  |  |
| 172 | 2.3 | **Flange Boards** |  | 2013-11-25 |  | start no earlier than 2013-11-25 |  |
| 173 | 2.3.1 | Design |  | 2013-11-25 |  |  | 80h |
| 174 | 2.3.2 | Procurement |  | 2014-01-14 | 173 | start no earlier than 2014-01-14 | 40h |
| 175 | 2.3.3 | Assembly |  | 2014-01-21 | 174 |  | 40h |
| 176 | 2.3.4 | Testing |  | 2014-01-28 | 175 |  | 552h |
| 177 | 2.3.5 | Flange Boards Functionality Complete | milestone | 2014-05-03 | 176 |  |  |
| 178 | 2.3.6 | Procurement Production |  | 2014-05-05 | 177 |  | 40h |
| 179 | 2.3.7 | Production Testing |  | 2014-05-12 | 178 |  | 40h |
| 180 | 2.3.8 | Flange Boards Complete | milestone | 2014-05-17 | 179 |  |  |
| 181 | 2.4 | **Power Flange Boards** |  | 2014-03-10 |  |  |  |
| 182 | 2.4.1 | Design |  | 2014-03-10 |  | start no earlier than 2014-03-09 | 80h |
| 183 | 2.4.2 | Schematic |  | 2014-03-24 | 182 |  | 16h |
| 184 | 2.4.3 | Layout |  | 2014-03-26 | 183 |  | 224h |
| 185 | 2.4.4 | Procurement |  | 2014-05-05 | 184 | start no earlier than 2014-01-14 | 40h |
| 186 | 2.4.5 | Assembly |  | 2014-05-12 | 185 |  | 40h |
| 187 | 2.4.6 | Testing |  | 2014-05-19 | 186 |  | 8h |
| 188 | 2.4.7 | Power Flange Boards Complete | milestone | 2014-05-20 | 187 |  |  |

| ID | WBS | Task | Start | Predecessors | Constraint | Work |
| --- | --- | --- | --- | --- | --- | --- |
| 189 | 2.5 | **Cables** | 2014-02-03 |  | start no earlier than 2014-02-03 |  |
| 190 | 2.5.1 | **L1-L3 Aggregators** | 2014-04-18 |  | start no earlier than 2014-04-18 |  |
| 191 | 2.5.1.1 | Design | 2014-04-18 |  |  | 80h |
| 192 | 2.5.1.2 | Schematic | 2014-05-02 | 191 |  | 8h |
| 193 | 2.5.1.3 | Layout | 2014-05-05 | 192 |  | 80h |
| 194 | 2.5.1.4 | Procurement | 2014-05-19 | 193 |  | 40h |
| 195 | 2.5.1.5 | Assembly | 2014-05-26 | 194 |  | 40h |
| 196 | 2.5.1.6 | Testing | 2014-06-02 | 195 |  | 40h |
| 197 | 2.5.2 | **L1-L3 FEB Cables** | 2014-04-18 |  | start no earlier than 2014-04-18 |  |
| 198 | 2.5.2.1 | Design | 2014-04-18 |  |  | 80h |
| 199 | 2.5.2.2 | Schematic | 2014-05-02 | 198 |  | 8h |
| 200 | 2.5.2.3 | Layout | 2014-05-05 | 199 |  | 80h |
| 201 | 2.5.2.4 | Procurement | 2014-05-19 | 200 |  | 40h |
| 202 | 2.5.2.5 | Assembly | 2014-05-26 | 201 |  | 40h |
| 203 | 2.5.2.6 | Testing | 2014-06-02 | 202 |  | 40h |
| 204 | 2.5.3 | **L4-L6 Aggregators** | 2014-04-18 |  | start no earlier than 2014-04-18 |  |
| 205 | 2.5.3.1 | Design | 2014-04-18 |  |  | 80h |
| 206 | 2.5.3.2 | Schematic | 2014-05-02 | 205 |  | 8h |
| 207 | 2.5.3.3 | Layout | 2014-05-05 | 206 |  | 80h |
| 208 | 2.5.3.4 | Procurement | 2014-05-19 | 207 |  | 40h |
| 209 | 2.5.3.5 | Assembly | 2014-05-26 | 208 |  | 40h |
| 210 | 2.5.3.6 | Testing | 2014-06-02 | 209 |  | 40h |
| 211 | 2.5.4 | **L4-L6 FEB Cables** | 2014-04-18 |  | start no earlier than 2014-04-18 |  |
| 212 | 2.5.4.1 | Design | 2014-04-18 |  |  | 80h |
| 213 | 2.5.4.2 | Schematic | 2014-05-02 | 212 |  | 8h |
| 214 | 2.5.4.3 | Layout | 2014-05-05 | 213 |  | 80h |
| 215 | 2.5.4.4 | Procurement | 2014-05-19 | 214 |  | 40h |
| 216 | 2.5.4.5 | Assembly | 2014-05-26 | 215 |  | 40h |
| 217 | 2.5.4.6 | Testing | 2014-06-02 | 216 |  | 40h |

| ID | WBS | Task | Type | Start | Predecessors | Constraint | Work |
| --- | --- | --- | --- | --- | --- | --- | --- |
| 218 | 2.5.5 | **FEB HV Cables** |  | 2014-02-03 |  |  |  |
| 219 | 2.5.5.1 | Design |  | 2014-02-03 |  |  | 120h |
| 220 | 2.5.5.2 | Procurement |  | 2014-02-24 | 219 |  | 440h |
| 221 | 2.5.5.3 | Assembly |  | 2014-05-12 | 220 |  | 80h |
| 222 | 2.5.5.4 | Testing |  | 2014-05-26 | 221 |  | 48.06h |
| 223 | 2.5.6 | **FEB LV Cables** |  | 2014-02-03 |  |  |  |
| 224 | 2.5.6.1 | Design |  | 2014-02-03 |  |  | 120h |
| 225 | 2.5.6.2 | Procurement |  | 2014-02-24 | 224 |  | 440h |
| 226 | 2.5.6.3 | Assembly |  | 2014-05-12 | 225 |  | 80h |
| 227 | 2.5.6.4 | Testing |  | 2014-05-26 | 226 |  | 40h |
| 228 | 2.5.7 | **FEB Data Cables** |  | 2014-02-03 |  |  |  |
| 229 | 2.5.7.1 | Design |  | 2014-02-03 |  |  | 40h |
| 230 | 2.5.7.2 | Procurement |  | 2014-02-10 | 229 |  | 40h |
| 231 | 2.5.7.3 | Testing |  | 2014-02-17 | 230 |  | 360h |
| 232 | 2.5.7.4 | Production Procurement |  | 2014-05-02 | 231 | start no earlier than 2014-05-02 | 40h |
| 233 | 2.5.7.5 | Production Testing |  | 2014-05-09 | 232 |  | 40h |
| 234 | 2.5.8 | **External PS Cables** |  | 2014-02-03 |  |  |  |
| 235 | 2.5.8.1 | Design |  | 2014-02-03 |  |  | 560h |
| 236 | 2.5.8.2 | Procurement |  | 2014-05-12 | 235 |  | 72h |
| 237 | 2.5.8.3 | Assembly |  | 2014-05-23 | 236 |  | 120h |
| 238 | 2.5.8.4 | Testing |  | 2014-06-13 | 237 |  | 16h |
| 239 | 2.5.9 | **External DAQ Cables** |  | 2014-04-21 |  |  |  |
| 240 | 2.5.9.1 | Design |  | 2014-04-21 |  | start no earlier than 2014-04-21 | 8h |
| 241 | 2.5.9.2 | Procurement |  | 2014-04-22 | 240 |  | 160h |
| 242 | 2.5.9.3 | Assembly |  | 2014-05-20 | 241 |  | 8h |
| 243 | 2.5.9.4 | Testing |  | 2014-05-21 | 242 |  | 8h |
| 244 | 2.5.10 | Cables Complete | milestone | 2014-06-17 | 190, 197, 204, 211, 218, 223, 228, 234, 239, 238, 243 |  |  |

| ID | WBS | Task | Type | Start | Predecessors | Constraint | Work |
| --- | --- | --- | --- | --- | --- | --- | --- |
| 245 | 2.6 | **ATCA DAQ** |  | 2014-01-06 |  | start no earlier than 2014-01-06 |  |
| 246 | 2.6.1 | **RCE Nodes** |  | 2014-04-04 |  |  |  |
| 247 | 2.6.1.1 | Procurement |  | 2014-04-04 |  | start no earlier than 2014-04-04 | 160h |
| 248 | 2.6.1.2 | DPM Firmware |  | 2014-05-02 | 247 |  | 80h |
| 249 | 2.6.1.3 | Software |  | 2014-05-16 | 248 |  | 80h |
| 250 | 2.6.1.4 | DTM Firmware |  | 2014-05-30 | 249 |  | 80h |
| 251 | 2.6.1.5 | ROC Software |  | 2014-06-13 | 250 |  | 80h |
| 252 | 2.6.1.6 | Testing |  | 2014-06-27 | 251, 166 |  | 80h |
| 253 | 2.6.2 | **Trigger RTM** |  | 2014-01-06 |  |  |  |
| 254 | 2.6.2.1 | Design |  | 2014-01-06 |  |  | 560h |
| 255 | 2.6.2.2 | Procurement |  | 2014-04-14 | 254 |  | 120h |
| 256 | 2.6.2.3 | Assembly |  | 2014-05-05 | 255 |  | 40h |
| 257 | 2.6.2.4 | Testing |  | 2014-05-12 | 256, 177 |  | 120h |
| 258 | 2.6.3 | RCE DAQ Complete | milestone | 2014-07-11 | 252, 257 |  |  |
| 259 | 2.7 | **Power Supplies** |  | 2013-11-22 |  | start no earlier than 2013-11-22 |  |
| 260 | 2.7.1 | Procurement |  | 2013-11-22 |  |  | 1224h |
| 261 | 2.7.2 | EPICS IOC software |  | 2014-05-05 |  | start no earlier than 2014-05-05 | 120h |
| 262 | 2.7.3 | Testing |  | 2014-06-25 | 260, 261 |  | 80h |
| 263 | 2.8 | **Integration** |  | 2014-07-09 |  |  |  |
| 264 | 2.8.1 | Assembly |  | 2014-07-09 | 189, 244, 262 |  | 80h |
| 265 | 2.8.2 | EPICS GUI testing |  | 2014-07-23 | 264 |  | 40h |
| 266 | 2.8.3 | Testing |  | 2014-07-30 | 245, 264, 171, 265 |  | 200h |
| 267 | 2.9 | SVT DAQ Complete | milestone | 2014-09-03 | 266 |  |  |

Notes:
- 260: Crate&LV modules 6/24, HV modules 5/9.
- 265: Bryan visits SLAC to help setup EPICS
